Schedule from MS Project, 2013-10-15 to 2014-01-09, status date 2013-10-11, A marks actual dates.

## Calendars

- 标准: Mon-Fri 08:00-12:00, 13:00-17:00; Sat-Sun off.

## Resources

| Resource |
| --- |
| 朱正晶 |
| 温泉 |
| 张强 |
| 苏久隆 |
| 刘海涌 |
| 白卉 |
| 杨传哲 |

## Schedule

| ID | WBS | Task | Duration | Start | Finish | Predecessors | Complete | Remaining | Baseline start | Baseline finish | Baseline duration | Total slack | Free slack | Constraint | Resources | Work | Actual work |
| --- | --- | --- | --- | --- | --- | --- | --- | --- | --- | --- | --- | --- | --- | --- | --- | --- | --- |
| 1 | 1 | **Trima** | 63d? | 2013-10-15 A | 2014-01-09 |  | 44% | 35.03d? |  |  |  | 13.98d |  |  |  | 4556.67h | 1984.68h |
| 2 | 1.1 | 说明 | 1d? | 2013-10-15 | 2013-10-15 |  |  |  |  |  |  | 75.98d |  |  |  |  |  |
| 4 | 1.2 | **约定（详细参考备注）** | 1d? | 2013-10-15 | 2013-10-15 |  |  |  |  |  |  | 62d |  |  |  |  |  |
| 5 | 1.2.1 | 代码编写规范 | 1d? | 2013-10-15 | 2013-10-15 |  |  |  |  |  |  | 75.98d | 0d | start no earlier than 2013-10-15 |  |  |  |
| 6 | 1.2.2 | 任务资源负责人 | 1d? | 2013-10-15 | 2013-10-15 | 5SS |  |  |  |  |  | 75.98d | 0d | start no earlier than 2013-10-15 |  |  |  |
| 7 | 1.2.3 | **板子负责人** | 1d? | 2013-10-15 | 2013-10-15 |  |  |  |  |  |  | 62d |  |  |  |  |  |
| 8 | 1.2.3.1 | 1、编译，查看错误 | 1d? | 2013-10-15 | 2013-10-15 |  |  |  | 2003-09-25 | 2003-09-25 | 1d? | 75.98d | 0d | start no earlier than 2013-10-15 |  |  |  |
| 9 | 1.2.3.2 | 2、整体架构，流程，资源消耗的掌控 | 1d? | 2013-10-15 | 2013-10-15 | 8SS |  |  | 2003-09-25 | 2003-09-25 | 1d? | 75.98d | 0d | start no earlier than 2013-10-15 |  |  |  |
| 10 | 1.2.3.3 | 3、编码风格监督 | 1d? | 2013-10-15 | 2013-10-15 | 9SS |  |  | 2003-09-25 | 2003-09-25 | 1d? | 75.98d | 0d | start no earlier than 2013-10-15 |  |  |  |
| 11 | 1.2.3.4 | 4、联合调试对应板子的直接责任人 | 1d? | 2013-10-15 | 2013-10-15 | 10SS |  |  |  |  |  | 75.98d | 0d | start no earlier than 2013-10-15 |  |  |  |
| 12 | 1.2.3.5 | 5、技术文档整合 | 1d? | 2013-10-15 | 2013-10-15 | 11SS |  |  |  |  |  | 75.98d | 0d | start no earlier than 2013-10-15 |  |  |  |
| 13 | 1.2.3.6 | 6、测试？ | 1d? | 2013-10-15 | 2013-10-15 | 12SS |  |  |  |  |  | 75.98d | 0d | start no earlier than 2013-10-15 |  |  |  |
| 15 | 1.2.3.7 | Trima软件负责人：刘海涌 | 1d? | 2013-10-15 | 2013-10-15 |  |  |  |  |  |  | 75.98d |  |  |  |  |  |
| 16 | 1.2.3.8 | ARM0：张强 | 1d? | 2013-10-15 | 2013-10-15 |  |  |  |  |  |  | 75.98d | 0d | start no earlier than 2013-10-15 |  |  |  |
| 17 | 1.2.3.9 | ARM1：温泉 | 1d? | 2013-10-15 | 2013-10-15 | 16SS |  |  |  |  |  | 75.98d | 0d | start no earlier than 2013-10-15 |  |  |  |
| 18 | 1.2.3.10 | ARM2：朱正晶 | 1d? | 2013-10-15 | 2013-10-15 | 17SS |  |  |  |  |  | 75.98d | 0d | start no earlier than 2013-10-15 |  |  |  |
| 19 | 1.2.3.11 | ARM3：苏久隆 | 1d? | 2013-10-15 | 2013-10-15 | 18SS |  |  |  |  |  | 75.98d |  | start no earlier than 2013-10-15 |  |  |  |
| 20 | 1.2.4 | 代码结构（需补充附件） | 1d? | 2013-10-15 | 2013-10-15 | 6SS |  |  |  |  |  | 75.98d | 0d | start no earlier than 2013-10-15 |  |  |  |
| 21 | 1.2.5 | 任务分级 | 1d? | 2013-10-15 | 2013-10-15 | 20SS |  |  |  |  |  | 75.98d | 0d | start no earlier than 2013-10-15 |  |  |  |
| 24 | 1.3 | **IPC** | 20d? | 2013-10-15 A | 2013-11-11 |  | 10% | 17.97d? |  |  |  | 43d |  |  |  | 187.2h | 20.48h |
| 25 | 1.3.1 | 界面 | 1d? | 2013-10-29 A | 2013-10-29 A |  | 100% |  |  |  |  |  |  | start no earlier than 2013-10-29 | 杨传哲 | 8h | 8h |
| 26 | 1.3.2 | **功能** | 1d? | 2013-10-15 A | 2013-10-15 |  | 23% | 0.77d? |  |  |  | 62d | 0d |  | 杨传哲; 刘海涌 [20%]; 张强 [20%] | 19.2h | 4.48h |
| 27 | 1.3.2.1 | 串口通信封装 | 1d? | 2013-10-15 A | 2013-10-15 |  | 23% | 0.77d? |  |  |  | 62d |  |  |  | 8h | 1.87h |
| 28 | 1.3.3 | 美化 | 20d? | 2013-10-15 A | 2013-11-11 | 26SS | 5% | 19d? |  |  |  | 43d | 0d | start no earlier than 2013-10-15 | 杨传哲 | 160h | 8h |

Notes:
- 5: 采用华为嵌入式编码规范 / 文档已上传FTP，学习，编码规范目录下
- 6: 每一个子任务中 / 1、如果只有一个资源，则该资源为该任务的负责人，或负责编写代码 / 2、如果有多个资源，按照资源比重，比重大的为该任务负责人，或负责编写代码 / 剩下的人负责辅助完成该任务； / 3、如果有多个资源，且资源比重相同，则按照排列顺序，谁在前面谁为该任务的负责人，负责人具有调度子任务内资源的权利 / 4、如果一个资源的比重为0%，表示该资源无需参与代码编写，但是需要完全了解整个任务实现思路和大体过程 / 5、每个子任务负责人需自己定期更新技术文档，最后交由板子负责人合并后，再上交公司备档！
- 12: 整个各个子任务技术文档 / 规整备档 / 文档格式： / word
- 21: 任务量和难度评估 / （补充ing）

| ID | WBS | Task | Duration | Start | Finish | Predecessors | Complete | Remaining | Baseline start | Baseline finish | Baseline duration | Total slack | Free slack | Constraint | Resources | Work | Actual work |
| --- | --- | --- | --- | --- | --- | --- | --- | --- | --- | --- | --- | --- | --- | --- | --- | --- | --- |
| 31 | 1.4 | **ARM0** | 50d? | 2013-10-15 A | 2013-12-23 |  | 25% | 37.53d? |  |  |  | 13d |  |  |  | 1461.25h | 497.27h |
| 32 | 1.4.1 | **控制结构和接口定义** | 12.23d? | 2013-10-15 A | 2013-10-31 |  | 70% | 3.69d? | 2003-09-25 | 2003-10-08 | 10d? | 50.77d |  |  |  | 164h | 150.08h |
| 33 | 1.4.1.1 | 控制结构（完成） | 1d? | 2013-10-15 A | 2013-10-15 A |  | 100% |  | 2003-09-25 | 2003-09-25 | 1d? |  |  |  | 刘海涌; 温泉; 朱正晶 | 24h | 24h |
| 34 | 1.4.1.2 | **接口的详细定义** | 12.23d? | 2013-10-15 A | 2013-10-31 |  | 61% | 4.78d? | 2003-09-25 | 2003-10-01 | 5d? | 50.77d |  |  |  | 75.2h | 61.28h |
| 35 | 1.4.1.2.1 | Task间接口 | 4d | 2013-10-15 A | 2013-10-18 |  | 50% | 2d | 2003-09-25 | 2003-09-30 | 4d | 59d |  |  | 刘海涌 [25%]; 张强 | 16h | 12h |
| 36 | 1.4.1.2.2 | ErrorCode规范确定 | 1d? | 2013-10-29 A | 2013-10-29 A | 35 | 100% |  |  |  |  |  |  | start no earlier than 2013-10-29 | 刘海涌; 朱正晶; 张强; 温泉 | 24h | 24h |
| 37 | 1.4.1.2.3 | ErrorCode细分完成 | 1d? | 2013-10-30 A | 2013-10-30 | 36 | 10% | 0.9d? |  |  |  | 50.77d | 0d |  | 张强 | 8h | 0.8h |
| 38 | 1.4.1.2.4 | ARM0与工控机的接口 | 2d | 2013-10-21 A | 2013-10-31 | 37 | 89% | 0.23d | 2003-10-01 | 2003-10-01 | 1d? | 50.77d |  | start no earlier than 2013-10-15 | 刘海涌 [50%]; 张强; 温泉 [50%] | 27.2h | 24.48h |
| 39 | 1.4.1.3 | Task职能和名称的细分确认 | 5d | 2013-10-15 A | 2013-10-28 A | 38, 33SS | 100% |  | 2003-10-02 | 2003-10-08 | 5d |  |  | start no earlier than 2003-09-25 | 刘海涌; 张强 | 40.8h | 40.8h |
| 40 | 1.4.1.4 | 任务层通讯方式的制定（完成） | 1d? | 2013-10-15 A | 2013-10-15 A | 39SS | 100% |  | 2003-09-25 | 2003-09-25 | 1d? |  |  |  | 朱正晶; 温泉; 刘海涌 | 24h | 24h |
| 43 | 1.4.2 | **驱动开发和接口封装** | 12.06d? | 2013-10-15 A | 2013-10-31 |  | 64% | 4.35d? | 2003-09-25 | 2003-09-25 | 1d? | 50.94d |  |  |  | 260.48h | 192.08h |
| 44 | 1.4.2.1 | **RS232** | 7d? | 2013-10-15 A | 2013-10-23 A |  | 100% |  | 2003-09-25 | 2003-09-25 | 1d? |  |  |  |  | 40h | 40h |
| 45 | 1.4.2.1.1 | 驱动开发（DMA+IDLE）（完成） | 1d? | 2013-10-15 A | 2013-10-15 A |  | 100% |  | 2003-09-25 | 2003-09-25 | 1d? |  |  |  | 朱正晶; 温泉 | 16h | 16h |
| 46 | 1.4.2.1.2 | ARM0板上调试（完成） | 3d? | 2013-10-15 A | 2013-10-23 A |  | 100% |  | 2003-09-25 | 2003-09-25 | 1d? |  |  |  | 朱正晶 | 24h | 24h |
| 47 | 1.4.2.2 | **ComX** | 12.06d? | 2013-10-15 A | 2013-10-31 A |  | 100% |  | 2003-09-25 | 2003-09-25 | 1d? |  |  |  | 朱正晶 | 128.48h | 128.48h |
| 48 | 1.4.2.2.1 | 驱动开发（完成） | 1d? | 2013-10-15 A | 2013-10-15 A |  | 100% |  | 2003-09-25 | 2003-09-25 | 1d? |  |  |  | 朱正晶 | 8h | 8h |
| 49 | 1.4.2.2.2 | 接口封装 | 3d? | 2013-10-28 A | 2013-10-31 A | 39 | 100% |  | 2003-09-25 | 2003-09-25 | 1d? |  |  | start no earlier than 2013-10-15 | 朱正晶 | 24h | 24h |
| 50 | 1.4.2.3 | **GPIO** | 10.56d? | 2013-10-15 A | 2013-10-29 |  | 70% | 3.17d? |  |  |  | 52.44d |  |  |  | 20h | 14h |
| 51 | 1.4.2.3.1 | 两个外部按键中断接口 | 1.5d | 2013-10-28 A | 2013-10-29 | 39 | 50% | 0.75d |  |  |  | 52.44d |  | start no earlier than 2013-10-15 | 朱正晶 | 12h | 6h |
| 52 | 1.4.2.3.2 | 所有GPIO配置及其它无用引脚处理 | 1d? | 2013-10-15 A | 2013-10-15 A |  | 100% |  |  |  |  |  |  |  | 朱正晶 | 8h | 8h |
| 53 | 1.4.2.4 | **传感器** | 3.7d? | 2013-10-15 A | 2013-10-18 |  | 13% | 3.21d? |  |  |  | 59.3d |  |  |  | 72h | 9.6h |
| 54 | 1.4.2.4.1 | 传感器功能调试 | 1d? | 2013-10-15 A | 2013-10-15 |  | 10% | 0.9d? |  |  |  | 59.3d | 0d | start no earlier than 2013-09-25 | 苏久隆; 白卉 | 16h | 1.6h |
| 55 | 1.4.2.4.2 | 传感类型功能电路调试 | 3d? | 2013-10-15 A | 2013-10-18 | 54 | 10% | 2.7d? |  |  |  | 59.3d |  | start no earlier than 2013-09-25 | 苏久隆; 白卉 | 48h | 4.8h |
| 56 | 1.4.2.4.3 | 器件选型（always） | 1d? | 2013-10-15 A | 2013-10-15 |  | 40% | 0.6d? |  |  |  | 62d |  | start no earlier than 2013-09-25 | 苏久隆 | 8h | 3.2h |

Notes:
- 32: 1、控制结构 / 2、接口的制定 / 3、Task职能和名称的确定 / 4、通讯方式的制定
- 33: 过程中再讨论沟通
- 38: 张强再审核
- 39: 详细的设计文档 / 需细分 / 每个task详细的设计和实现思路 / 1、细分 / 2、边写代码边更新文档
- 40: 讨论完成
- 44: 1、RS232驱动开发 / 使用DMA+IDLE中断的模式；-- 朱正晶、温泉（完成） / 2、ARM0板上调试； -- 朱正晶 / 3、ARM0板上RS232接口封装； -- 朱正晶
- 53: ARM0板上传感器较少 / 外围电路需要监控AMR0上电压，AD对应到ARM0传感器分类内
- 55: 如电源监控的AD采样电路等

| ID | WBS | Task | Duration | Start | Finish | Predecessors | Complete | Remaining | Baseline start | Baseline finish | Baseline duration | Total slack | Free slack | Constraint | Resources | Work | Actual work |
| --- | --- | --- | --- | --- | --- | --- | --- | --- | --- | --- | --- | --- | --- | --- | --- | --- | --- |
| 58 | 1.4.3 | **应用开发** | 50d? | 2013-10-15 A | 2013-12-23 |  | 21% | 39.62d? | 2003-09-25 | 2003-09-25 | 1d? | 13d |  |  |  | 636.77h | 142.34h |
| 59 | 1.4.3.1 | comX100_module_task | 7d? | 2013-10-15 A | 2013-10-23 | 39 |  | 7d? | 2003-09-25 | 2003-09-25 | 1d? | 53d | 0d |  | 朱正晶 | 56h |  |
| 60 | 1.4.3.2 | comX100_module_send_task | 3d? | 2013-10-24 | 2013-10-28 | 59 |  |  | 2003-09-25 | 2003-09-25 | 1d? | 53d |  | start no earlier than 2013-10-15 | 朱正晶 | 24h |  |
| 61 | 1.4.3.3 | usart_dma_route_task（ok） | 1d? | 2013-10-15 A | 2013-10-15 A |  | 100% |  | 2003-09-25 | 2003-09-25 | 1d? |  |  |  | 朱正晶; 温泉 | 16h | 16h |
| 62 | 1.4.3.4 | cmd_analysis_task | 21d? | 2013-10-15 A | 2013-11-12 |  | 35% | 13.65d? | 2003-09-25 | 2003-09-25 | 1d? | 13d | 0d | start no earlier than 2013-09-25 | 张强; 刘海涌 [50%] | 168h | 58.8h |
| 63 | 1.4.3.5 | fs_task（待定） | 1d? | 2013-11-13 | 2013-11-13 | 62 |  |  | 2003-09-25 | 2003-09-25 | 1d? | 13d | 0d | start no earlier than 2013-10-15 | 张强 | 8h |  |
| 64 | 1.4.3.6 | control_board_monitor_task | 14d? | 2013-11-14 A | 2013-12-03 | 63 | 25% | 10.5d? | 2003-09-25 | 2003-09-25 | 1d? | 13d | 0d | start no earlier than 2013-10-15 | 张强; 刘海涌 [50%] | 168h | 42h |
| 65 | 1.4.3.7 | unexception_flow | 14d? | 2013-12-04 | 2013-12-23 | 64 |  |  | 2003-09-25 | 2003-09-25 | 1d? | 13d |  | start no earlier than 2013-10-15 | 张强; 刘海涌 [50%] | 168h |  |
| 66 | 1.4.3.8 | 板级--急停、暂停 | 1.76d | 2013-10-15 A | 2013-10-16 |  | 91% | 0.16d |  |  |  | 61.24d |  | start no earlier than 2013-09-25 | 张强; 刘海涌; 朱正晶 [50%] | 28.77h | 25.54h |
| 69 | 1.4.4 | 文档类同步更新 | 50d? | 2013-10-15 A | 2013-12-23 | 28SS | 3% | 48.4d? | 2003-09-25 | 2003-09-25 | 1d? | 13d | 0d | finish no earlier than 2013-12-03 | 张强 | 400h | 12.77h |
| 72 | 1.5 | ARM1负责人 | 1d? | 2013-10-15 | 2013-10-15 |  |  |  | 2003-09-25 | 2003-09-25 | 1d? | 62d |  | start no earlier than 2013-10-15 | 温泉 | 8h |  |
| 73 | 1.6 | **ARM1** | 63d? | 2013-10-15 A | 2014-01-09 |  | 59% | 25.66d? | 2003-09-25 | 2003-09-26 | 1.5d? | 0d |  |  | 温泉 | 1381.11h | 747.61h |
| 74 | 1.6.1 | **控制结构和接口定义** | 9.9d? | 2013-10-15 A | 2013-10-28 |  | 81% | 1.92d? |  |  |  | 53.1d |  |  | 温泉 | 251.11h | 214.47h |
| 75 | 1.6.1.1 | 控制结构 | 1d? | 2013-10-15 A | 2013-10-15 A |  | 100% |  |  |  |  |  |  |  | 温泉 | 8h | 8h |
| 76 | 1.6.1.2 | **接口详细定义** | 4.49d? | 2013-10-15 A | 2013-10-21 |  | 82% | 0.81d? |  |  |  | 58.51d |  |  | 温泉 | 75.11h | 38.47h |
| 77 | 1.6.1.2.1 | Task间接口 | 2.88d | 2013-10-15 A | 2013-10-17 |  | 78% | 0.64d | 2003-09-25 | 2003-09-30 | 4d | 59.88d | 0d |  | 刘海涌 [25%]; 温泉 | 15.99h | 9.59h |
| 78 | 1.6.1.2.2 | ARM0与ARM1的接口 | 2d? | 2013-10-15 A | 2013-10-21 | 77 | 88% | 0.24d? | 2003-10-01 | 2003-10-01 | 1d? | 58.51d |  |  | 刘海涌 [20%]; 温泉; 张强 | 23.2h | 20.88h |
| 79 | 1.6.1.3 | Task职能和名称的细分确认 | 5d | 2013-10-15 A | 2013-10-28 A | 78 | 100% |  | 2003-10-02 | 2003-10-08 | 5d |  |  | start no earlier than 2003-09-25 | 刘海涌; 温泉 | 40.8h | 40.8h |
| 80 | 1.6.1.4 | 任务层通讯方式的制定（完成） | 2d? | 2013-10-15 A | 2013-10-16 A |  | 100% |  | 2003-09-25 | 2003-09-25 | 1d? |  |  |  | 朱正晶; 温泉; 刘海涌 | 48h | 48h |
| 83 | 1.6.2 | **驱动开发和接口** | 17d? | 2013-10-15 A | 2013-11-06 |  | 27% | 12.41d? |  |  |  | 46d |  |  |  | 456h | 126.8h |
| 84 | 1.6.2.1 | **RS232** | 1d? | 2013-10-15 A | 2013-10-15 A |  | 100% |  | 2003-09-25 | 2003-09-25 | 1d? |  |  |  |  | 24h | 24h |
| 85 | 1.6.2.1.1 | 驱动开发（DMA+IDLE）（完成） | 1d? | 2013-10-15 A | 2013-10-15 A |  | 100% |  | 2003-09-25 | 2003-09-25 | 1d? |  |  |  | 朱正晶; 温泉 | 16h | 16h |
| 86 | 1.6.2.1.2 | ARM1板上调试（完成） | 1d? | 2013-10-15 A | 2013-10-15 A |  | 100% |  | 2003-09-25 | 2003-09-25 | 1d? |  |  | start no earlier than 2013-10-15 | 朱正晶 | 8h | 8h |
| 87 | 1.6.2.2 | **NetIC** | 3d? | 2013-10-15 A | 2013-10-17 |  | 98% | 0.07d? |  |  |  | 60d |  |  |  | 48h | 46.8h |
| 88 | 1.6.2.2.1 | 驱动开发（完成） | 3d? | 2013-10-15 A | 2013-10-17 A |  | 100% |  | 2003-09-25 | 2003-09-25 | 1d? |  |  |  | 温泉 | 24h | 24h |
| 89 | 1.6.2.2.2 | 接口封装 | 3d? | 2013-10-15 A | 2013-10-17 |  | 95% | 0.15d? | 2003-09-25 | 2003-09-25 | 1d? | 60d |  | start no earlier than 2013-10-15 | 温泉 | 24h | 22.8h |

Notes:
- 59: 测试 / 接口未封装
- 60: 测试 / 接口封装
- 61: 正晶 完成
- 62: 框架完成 正晶 / 需流程细分
- 63: 暂定不用fs
- 64: 未进行
- 65: 未进行
- 66: 中断驱动接口：朱正晶
- 76: 久隆部分的接口定义 / 通信
- 77: 缺少久隆部分的通信
- 78: 张强再审核
- 79: 详细的设计文档 / 需细分 / 每个task详细的设计和实现思路 / 1、细分 / 2、边写代码边更新文档
- 80: 讨论完成
- 84: 1、RS232驱动开发 / 使用DMA+IDLE中断的模式；-- 朱正晶、温泉（完成） / 2、ARM0板上调试； -- 朱正晶 / 3、ARM0板上RS232接口封装； -- 朱正晶
- 87: 1、概率TPO没有发送

| ID | WBS | Task | Duration | Start | Finish | Predecessors | Complete | Remaining | Baseline start | Baseline finish | Baseline duration | Total slack | Free slack | Constraint | Resources | Work | Actual work |
| --- | --- | --- | --- | --- | --- | --- | --- | --- | --- | --- | --- | --- | --- | --- | --- | --- | --- |
| 90 | 1.6.2.3 | **GPIO** | 1d? | 2013-10-15 A | 2013-10-15 A |  | 100% |  |  |  |  |  |  |  |  | 8h | 8h |
| 91 | 1.6.2.3.1 | 其它无用引脚置位Tri-state | 1d? | 2013-10-15 A | 2013-10-15 A |  | 100% |  |  |  |  |  |  | start no earlier than 2013-10-15 | 温泉 | 8h | 8h |
| 92 | 1.6.2.4 | **泵（采血/AC/回输）** | 3d? | 2013-10-15 A | 2013-10-17 |  | 4% | 2.88d? |  |  |  | 60d |  |  | 朱正晶 | 48h | 20h |
| 93 | 1.6.2.4.1 | 驱动调试 | 3d | 2013-10-15 | 2013-10-17 |  |  |  |  |  |  | 60d |  | start no earlier than 2013-10-15 |  |  |  |
| 94 | 1.6.2.4.2 | 驱动接口封装 | 1d? | 2013-10-15 | 2013-10-15 |  |  |  |  |  |  | 62d |  | start no earlier than 2013-10-15 | 朱正晶 | 8h |  |
| 95 | 1.6.2.4.3 | PID算法调试 | 1d? | 2013-10-15 A | 2013-10-15 |  | 20% | 0.8d? |  |  |  | 62d |  |  | 朱正晶; 苏久隆 | 16h | 3.2h |
| 96 | 1.6.2.5 | **传感器** | 17d? | 2013-10-15 A | 2013-11-06 |  | 7% | 15.86d? |  |  |  | 46d |  |  |  | 328h | 28h |
| 97 | 1.6.2.5.1 | 压力传感器 | 7d | 2013-10-15 | 2013-10-23 |  |  |  |  |  |  | 56d |  | start no earlier than 2013-10-15 | 苏久隆; 白卉 | 56h |  |
| 98 | 1.6.2.5.2 | 霍尔传感器 | 7d | 2013-10-15 | 2013-10-23 |  |  |  |  |  |  | 46d | 0d | start no earlier than 2013-10-15 | 苏久隆; 白卉 | 112h |  |
| 99 | 1.6.2.5.3 | AC气泡探测器 | 3d | 2013-10-24 | 2013-10-28 | 98 |  |  |  |  |  | 46d | 0d | start no earlier than 2013-10-15 | 苏久隆; 白卉 | 48h |  |
| 100 | 1.6.2.5.4 | 液位探测器 | 7d? | 2013-10-29 A | 2013-11-06 | 99 | 25% | 5.25d? |  |  |  | 46d |  | start no earlier than 2013-10-15 | 苏久隆; 白卉 | 112h | 28h |
| 103 | 1.6.3 | **应用开发** | 63d? | 2013-10-15 A | 2014-01-09 |  | 81% | 12.18d? |  |  |  | 0d |  |  |  | 170h | 107.6h |
| 104 | 1.6.3.1 | modbus_analyse_task | 27.5d? | 2013-10-15 A | 2013-11-21 A |  | 100% |  | 2003-09-25 | 2003-09-26 | 1.5d? |  |  | start no earlier than 2013-09-25 | 温泉; 刘海涌 [10%] | 34h | 34h |
| 105 | 1.6.3.2 | pump_control_task | 8d? | 2013-12-31 A | 2014-01-09 | 104 | 60% | 3.2d? | 2003-09-25 | 2003-09-25 | 1d? | 0d |  | start no earlier than 2013-10-15 | 朱正晶; 温泉 | 64h | 38.4h |
| 106 | 1.6.3.3 | salve1_monitor_task | 7d? | 2013-10-15 A | 2013-10-23 |  | 60% | 2.8d? | 2003-09-25 | 2003-09-25 | 1d? | 56d |  | start no earlier than 2013-10-15 | 温泉; 刘海涌 | 56h | 33.6h |
| 107 | 1.6.3.4 | sensor_task | 2d? | 2013-10-15 A | 2013-10-16 |  | 10% | 1.8d? | 2003-09-25 | 2003-09-25 | 1d? | 61d |  | start no earlier than 2013-10-15 | 苏久隆; 温泉 | 16h | 1.6h |
| 110 | 1.7 | ARM2 | 1d? | 2013-10-15 | 2013-10-15 |  |  |  |  |  |  | 62d |  |  |  |  |  |
| 111 | 1.8 | **控制结构和接口定义** | 9.9d? | 2013-10-15 A | 2013-10-28 |  | 85% | 1.49d? |  |  |  | 53.1d |  |  | 温泉 | 251.11h | 220.91h |
| 112 | 1.8.1 | 控制结构 | 1d? | 2013-10-15 A | 2013-10-15 A |  | 100% |  |  |  |  |  |  |  | 温泉 | 8h | 8h |
| 113 | 1.8.2 | **接口详细定义** | 4.49d? | 2013-10-15 A | 2013-10-21 |  | 95% | 0.22d? |  |  |  | 5.41d |  |  | 温泉 | 75.11h | 44.91h |
| 114 | 1.8.2.1 | Task间接口 | 2.88d | 2013-10-15 A | 2013-10-17 A |  | 100% |  | 2003-09-25 | 2003-09-30 | 4d |  |  |  | 刘海涌 [25%]; 温泉 | 15.99h | 15.99h |
| 115 | 1.8.2.2 | ARM0与ARM2的接口 | 2d? | 2013-10-15 A | 2013-10-21 | 114 | 88% | 0.24d? | 2003-10-01 | 2003-10-01 | 1d? | 5.41d |  |  | 刘海涌 [20%]; 温泉; 张强 | 23.2h | 20.92h |
| 116 | 1.8.3 | Task职能和名称的细分确认 | 5d | 2013-10-15 A | 2013-10-28 A | 115 | 100% |  | 2003-10-02 | 2003-10-08 | 5d |  |  | start no earlier than 2003-09-25 | 刘海涌; 温泉 | 40.8h | 40.8h |
| 117 | 1.8.4 | 任务层通讯方式的制定（完成） | 2d? | 2013-10-15 A | 2013-10-16 A |  | 100% |  | 2003-09-25 | 2003-09-25 | 1d? |  |  |  | 朱正晶; 温泉; 刘海涌 | 48h | 48h |

Notes:
- 92: 驱动开发和接口封装
- 100: 选型完成
- 104: 温泉 ing
- 105: 温泉 ing / 架构完成，待调试。。。
- 106: 未进行 / 架构完成，待调试
- 115: 张强再审核
- 116: 详细的设计文档 / 需细分 / 每个task详细的设计和实现思路 / 1、细分 / 2、边写代码边更新文档
- 117: 讨论完成

| ID | WBS | Task | Duration | Start | Finish | Predecessors | Complete | Remaining | Baseline start | Baseline finish | Baseline duration | Total slack | Free slack | Constraint | Resources | Work | Actual work |
| --- | --- | --- | --- | --- | --- | --- | --- | --- | --- | --- | --- | --- | --- | --- | --- | --- | --- |
| 120 | 1.9 | **驱动开发和接口** | 25d? | 2013-10-15 A | 2013-11-18 |  | 21% | 19.83d? |  |  |  | 38d |  |  |  | 456h | 96h |
| 121 | 1.9.1 | **RS232** | 1d? | 2013-10-25 A | 2013-10-25 |  | 95% | 0.05d? | 2003-09-25 | 2003-09-25 | 1d? | 54d |  |  |  | 24h | 23.2h |
| 122 | 1.9.1.1 | 驱动开发（DMA+IDLE）（完成） | 1d? | 2013-10-25 A | 2013-10-25 A |  | 100% |  | 2003-09-25 | 2003-09-25 | 1d? |  |  |  | 朱正晶; 温泉 | 16h | 16h |
| 123 | 1.9.1.2 | ARM2板上调试（完成） | 1d? | 2013-10-25 A | 2013-10-25 |  | 90% | 0.1d? | 2003-09-25 | 2003-09-25 | 1d? | 54d |  | start no earlier than 2013-10-25 | 朱正晶 | 8h | 7.2h |
| 124 | 1.9.2 | **NetIC** | 3d? | 2013-10-25 A | 2013-10-29 A |  | 100% |  |  |  |  |  |  |  |  | 48h | 48h |
| 125 | 1.9.2.1 | 驱动开发（完成） | 3d? | 2013-10-25 A | 2013-10-29 A |  | 100% |  | 2003-09-25 | 2003-09-25 | 1d? |  |  |  | 温泉 | 24h | 24h |
| 126 | 1.9.2.2 | 接口封装 | 3d? | 2013-10-25 A | 2013-10-29 A |  | 100% |  | 2003-09-25 | 2003-09-25 | 1d? |  |  | start no earlier than 2013-10-25 | 温泉 | 24h | 24h |
| 127 | 1.9.3 | **GPIO** | 1d? | 2013-10-25 A | 2013-10-25 A |  | 100% |  |  |  |  |  |  |  |  | 8h | 8h |
| 128 | 1.9.3.1 | 其它无用引脚置位Tri-state | 1d? | 2013-10-25 A | 2013-10-25 A |  | 100% |  |  |  |  |  |  | start no earlier than 2013-10-25 | 温泉 | 8h | 8h |
| 129 | 1.9.4 | **泵（PLT\血浆）** | 4d? | 2013-10-25 | 2013-10-30 |  |  |  |  |  |  | 0d | 50d |  | 朱正晶 | 40h | 16.8h |
| 130 | 1.9.4.1 | 驱动调试 | 3d | 2013-10-25 | 2013-10-29 |  |  |  |  |  |  | 49d | 0d | start no earlier than 2013-10-25 |  |  |  |
| 131 | 1.9.4.2 | 驱动接口封装 | 1d? | 2013-10-30 | 2013-10-30 | 130 |  |  |  |  |  | 50d | 0d | start no earlier than 2013-10-25 | 朱正晶 | 8h |  |
| 132 | 1.9.5 | **阀（血小板\血浆\红细胞）** | 3d? | 2013-10-30 | 2013-11-01 |  |  |  |  |  |  | 49d |  |  |  | 8h |  |
| 133 | 1.9.5.1 | 驱动调试 | 3d | 2013-10-30 | 2013-11-01 | 130 |  |  |  |  |  | 49d |  | start no earlier than 2013-10-25 |  |  |  |
| 134 | 1.9.5.2 | 驱动接口封装 | 1d? | 2013-10-31 | 2013-10-31 | 131 |  |  |  |  |  | 50d |  | start no earlier than 2013-10-25 | 朱正晶 | 8h |  |
| 135 | 1.9.6 | **传感器** | 25d? | 2013-10-15 | 2013-11-18 |  |  |  |  |  |  | 38d |  |  |  | 328h |  |
| 136 | 1.9.6.1 | 阀光电开关9 | 7d | 2013-10-25 | 2013-11-04 |  |  |  |  |  |  | 48d |  | start no earlier than 2013-10-25 | 苏久隆; 白卉 | 56h |  |
| 137 | 1.9.6.2 | 红细胞探测器 | 7d | 2013-10-25 | 2013-11-04 |  |  |  |  |  |  | 38d | 0d | start no earlier than 2013-10-25 | 苏久隆; 白卉 | 112h |  |
| 138 | 1.9.6.3 | PLT泵霍尔传感器 | 3d | 2013-11-05 | 2013-11-07 | 137 |  |  |  |  |  | 38d | 0d | start no earlier than 2013-10-25 | 苏久隆; 白卉 | 48h |  |
| 139 | 1.9.6.4 | 血浆泵霍尔传感器 | 7d? | 2013-11-08 | 2013-11-18 | 138 |  |  |  |  |  | 38d |  | start no earlier than 2013-10-25 | 苏久隆; 白卉 | 112h |  |
| 142 | 1.10 | **应用开发** | 63d? | 2013-10-15 A | 2014-01-09 |  | 93% | 4.15d? |  |  |  | 0d |  |  |  | 170h | 154h |
| 143 | 1.10.1 | modbus_analyse_task | 27.5d? | 2013-10-15 A | 2013-11-21 A |  | 100% |  | 2003-09-25 | 2003-09-26 | 1.5d? |  |  | start no earlier than 2013-09-25 | 温泉; 刘海涌 [10%] | 34h | 34h |
| 144 | 1.10.2 | pump_control_task | 8d? | 2013-12-31 A | 2014-01-09 A | 143 | 100% |  | 2003-09-25 | 2003-09-25 | 1d? |  |  | start no earlier than 2013-10-15 | 朱正晶; 温泉 | 64h | 64h |
| 145 | 1.10.3 | salve1_monitor_task | 7d? | 2013-10-15 A | 2013-10-23 A |  | 100% |  | 2003-09-25 | 2003-09-25 | 1d? |  |  | start no earlier than 2013-10-15 | 温泉; 刘海涌 | 56h | 56h |
| 146 | 1.10.4 | sensor_task | 2d? | 2013-10-15 | 2013-10-16 |  |  |  | 2003-09-25 | 2003-09-25 | 1d? | 61d |  | start no earlier than 2013-10-15 | 苏久隆; 温泉 | 16h |  |

Notes:
- 121: 1、RS232驱动开发 / 使用DMA+IDLE中断的模式；-- 朱正晶、温泉（完成） / 2、ARM0板上调试； -- 朱正晶 / 3、ARM0板上RS232接口封装； -- 朱正晶
- 129: 驱动开发和接口封装
- 143: 温泉 ing
- 144: 温泉 ing
- 145: 未进行

| ID | WBS | Task | Duration | Start | Finish | Predecessors | Complete | Remaining | Baseline start | Baseline finish | Baseline duration | Total slack | Free slack | Constraint | Resources | Work | Actual work |
| --- | --- | --- | --- | --- | --- | --- | --- | --- | --- | --- | --- | --- | --- | --- | --- | --- | --- |
| 150 | 1.11 | **ARM3** | 25d? | 2013-10-15 A | 2013-11-18 |  | 25% | 18.87d? | 2003-09-25 | 2003-09-25 | 1d? | 38d | 0d |  |  | 472h | 94.4h |
| 151 | 1.11.1 | **RS232** | 1d? | 2013-10-25 A | 2013-10-25 A |  | 100% |  | 2003-09-25 | 2003-09-25 | 1d? |  |  |  |  | 24h | 24h |
| 152 | 1.11.1.1 | 驱动开发（DMA+IDLE）（完成） | 1d? | 2013-10-25 A | 2013-10-25 A |  | 100% |  | 2003-09-25 | 2003-09-25 | 1d? |  |  |  | 朱正晶; 温泉 | 16h | 16h |
| 153 | 1.11.1.2 | ARM3板上调试 | 1d? | 2013-10-25 A | 2013-10-25 A |  | 100% |  | 2003-09-25 | 2003-09-25 | 1d? |  |  | start no earlier than 2013-10-25 | 朱正晶 | 8h | 8h |
| 154 | 1.11.2 | **NetIC** | 3d? | 2013-10-25 A | 2013-10-29 |  | 95% | 0.15d? |  |  |  | 52d |  |  |  | 48h | 45.6h |
| 155 | 1.11.2.1 | 驱动开发（完成） | 3d? | 2013-10-25 A | 2013-10-29 A |  | 100% |  | 2003-09-25 | 2003-09-25 | 1d? |  |  |  | 温泉 | 24h | 24h |
| 156 | 1.11.2.2 | 接口封装 | 3d? | 2013-10-25 A | 2013-10-29 |  | 90% | 0.3d? | 2003-09-25 | 2003-09-25 | 1d? | 52d |  | start no earlier than 2013-10-25 | 温泉 | 24h | 21.6h |
| 157 | 1.11.3 | **GPIO** | 1d? | 2013-10-25 A | 2013-10-25 A |  | 100% |  |  |  |  |  |  |  |  | 8h | 8h |
| 158 | 1.11.3.1 | 其它无用引脚置位Tri-state | 1d? | 2013-10-25 A | 2013-10-25 A |  | 100% |  |  |  |  |  |  | start no earlier than 2013-10-25 | 温泉 | 8h | 8h |
| 159 | 1.11.4 | **泵（离心机\卡匣电机）** | 4d? | 2013-10-25 | 2013-10-30 |  |  |  |  |  |  | 0d | 51d |  | 朱正晶 | 40h | 16.8h |
| 160 | 1.11.4.1 | 驱动调试 | 3d | 2013-10-25 | 2013-10-29 |  |  |  |  |  |  | 51d | 0d | start no earlier than 2013-10-25 |  |  |  |
| 161 | 1.11.4.2 | 驱动接口封装 | 1d? | 2013-10-30 | 2013-10-30 | 160 |  |  |  |  |  | 51d |  | start no earlier than 2013-10-25 | 朱正晶 | 8h |  |
| 162 | 1.11.5 | **传感器** | 25d? | 2013-10-15 | 2013-11-18 |  |  |  |  |  |  | 38d |  |  |  | 352h |  |
| 163 | 1.11.5.1 | 漏夜探测器 | 3.5d | 2013-10-25 | 2013-10-30 |  |  |  |  |  |  | 51.5d |  | start no earlier than 2013-10-25 | 苏久隆; 朱正晶 | 56h |  |
| 164 | 1.11.5.2 | 离心机压力传感器 | 7d | 2013-10-25 | 2013-11-04 |  |  |  |  |  |  | 38d | 0d | start no earlier than 2013-10-25 | 苏久隆; 朱正晶 | 112h |  |
| 165 | 1.11.5.3 | 仓门光电开关2 | 3d | 2013-11-05 | 2013-11-07 | 164 |  |  |  |  |  | 38d | 0d | start no earlier than 2013-10-25 | 苏久隆; 朱正晶 | 48h |  |
| 166 | 1.11.5.4 | 血浆泵霍尔传感器 | 7d? | 2013-11-08 | 2013-11-18 | 165 |  |  |  |  |  | 38d |  | start no earlier than 2013-10-25 | 苏久隆; 白卉 | 112h |  |
| 167 | 1.11.5.5 | 仓门电磁铁 | 1d? | 2013-10-15 | 2013-10-15 |  |  |  |  |  |  | 62d |  | start no earlier than 2013-10-15 | 苏久隆; 朱正晶 | 16h |  |
| 168 | 1.11.5.6 | 卡匣位置传感器 | 1d? | 2013-10-15 | 2013-10-15 |  |  |  |  |  |  | 62d |  | start no earlier than 2013-10-15 | 苏久隆 | 8h |  |
| 171 | 1.12 | **应用开发** | 63d? | 2013-10-15 A | 2014-01-09 |  | 93% | 4.15d? |  |  |  | 0d |  |  |  | 170h | 154h |
| 172 | 1.12.1 | modbus_analyse_task | 27.5d? | 2013-10-15 A | 2013-11-21 A |  | 100% |  | 2003-09-25 | 2003-09-26 | 1.5d? |  |  | start no earlier than 2013-09-25 | 温泉; 刘海涌 [10%] | 34h | 34h |
| 173 | 1.12.2 | pump_control_task | 8d? | 2013-12-31 A | 2014-01-09 A | 172 | 100% |  | 2003-09-25 | 2003-09-25 | 1d? |  |  | start no earlier than 2013-10-15 | 朱正晶; 温泉 | 64h | 64h |
| 174 | 1.12.3 | salve1_monitor_task | 7d? | 2013-10-15 A | 2013-10-23 A |  | 100% |  | 2003-09-25 | 2003-09-25 | 1d? |  |  | start no earlier than 2013-10-15 | 温泉; 刘海涌 | 56h | 56h |
| 175 | 1.12.4 | sensor_task | 2d? | 2013-10-15 | 2013-10-16 |  |  |  | 2003-09-25 | 2003-09-25 | 1d? | 61d |  | start no earlier than 2013-10-15 | 苏久隆; 温泉 | 16h |  |
| 179 | 1.13 | 联合调试 | 1d? | 2013-10-15 | 2013-10-15 |  |  |  |  |  |  | 62d | 0d | start no earlier than 2013-10-15 |  |  |  |

Notes:
- 151: 1、RS232驱动开发 / 使用DMA+IDLE中断的模式；-- 朱正晶、温泉（完成） / 2、ARM0板上调试； -- 朱正晶 / 3、ARM0板上RS232接口封装； -- 朱正晶
- 159: 驱动开发和接口封装
- 172: 温泉 ing
- 173: 温泉 ing
- 174: 未进行

| ID | WBS | Task | Duration | Start | Finish | Total slack | Constraint |
| --- | --- | --- | --- | --- | --- | --- | --- |
| 183 | 1.14 | **备忘：** | 1d? | 2013-10-15 | 2013-10-15 | 62d |  |
| 184 | 1.14.1 | ARM3添加8路AD电压采样 | 1d? | 2013-10-15 | 2013-10-15 | 62d | start no earlier than 2013-10-15 |

Notes:
- 184: 驱动通过 / 接口未开展
